# GestioneTurniPersonale

Schedule from MS Project, 2022-01-27 to 2022-05-05.

## Calendars

- Standard: Mon-Fri 09:00-13:00, 14:00-18:00; Sat-Sun off. Exceptions (off unless hours are given): 2022-01-27 to 2022-05-05 09:05-12:20, 13:15-16:30 (Lavorativo, recurring), 2022-01-27 to 2022-05-05 (Non lavorativo, recurring), 2022-03-03 (Vacanza carnevale), 2022-04-21 (Vacanza pasqua).
- 30%: Mon-Fri 09:00-13:00, 14:00-18:00; Sat-Sun off. Exceptions (off unless hours are given): 2022-01-27 to 2022-05-05 09:05-11:29 (Lavorativo, recurring), 2022-01-27 to 2022-05-05 (Non lavorativo, recurring), 2022-03-03 (Vacanza carnevale), 2022-04-21 (Vacanza pasqua).

## Resources

| Resource |
| --- |
| Gioele |
| Andrea |
| Dennis |

## Schedule

| ID | WBS | Task | Type | Duration | Start | Finish | Predecessors | Total slack | Resources | Work |
| --- | --- | --- | --- | --- | --- | --- | --- | --- | --- | --- |
| 1 | 1 | **Gestione Turni Personale** |  | 10.12d | 2022-01-27 09:05 | 2022-05-05 12:05 |  | 0d |  | 216h |
| 2 | 1.1 | **Analisi** |  | 0.69d | 2022-01-27 09:05 | 2022-01-27 15:30 |  | 0d |  | 16.5h |
| 3 | 1.1.1 | Domande al mandante |  | 0.5h | 2022-01-27 09:05 | 2022-01-27 09:35 |  | 0d | Andrea; Dennis; Gioele | 1.5h |
| 4 | 1.1.2 | Pianificazione Gantt |  | 3h | 2022-01-27 09:35 | 2022-01-27 13:30 | 3 | 0d | Dennis; Andrea; Gioele | 9h |
| 5 | 1.1.3 | Requisiti |  | 1h | 2022-01-27 13:30 | 2022-01-27 14:30 | 4 | 0d | Andrea; Dennis; Gioele | 3h |
| 6 | 1.1.4 | Test case |  | 1h | 2022-01-27 14:30 | 2022-01-27 15:30 | 5 | 0d | Gioele | 1h |
| 7 | 1.1.5 | Use case |  | 1h | 2022-01-27 14:30 | 2022-01-27 15:30 | 5 | 0d | Andrea | 1h |
| 8 | 1.1.6 | Abstract |  | 1h | 2022-01-27 14:30 | 2022-01-27 15:30 | 5 | 0d | Dennis | 1h |
| 9 | 1.2 | Termine analisi | milestone | 0d | 2022-01-27 15:30 | 2022-01-27 15:30 | 2 | 0d |  |  |
| 10 | 1.3 | **Progettazione** |  | 1d | 2022-01-27 15:30 | 2022-02-10 09:35 |  | 0d |  | 24h |
| 11 | 1.3.1 | Design del database |  | 4h | 2022-01-27 15:30 | 2022-02-03 12:05 | 9 | 0d | Dennis; Andrea; Gioele | 12h |
| 12 | 1.3.2 | Design delle pagine web |  | 4h | 2022-02-03 12:05 | 2022-02-10 09:35 | 11 | 0d | Andrea; Gioele; Dennis | 12h |
| 13 | 1.4 | Termine progettazione | milestone | 0d | 2022-02-10 09:35 | 2022-02-10 09:35 | 10 | 0d |  |  |
| 14 | 1.5 | **Implementazione** |  | 7.94d | 2022-02-10 09:35 | 2022-04-28 15:30 |  | 0d |  | 166.5h |
| 15 | 1.5.1 | Configurazione ambiente |  | 2h | 2022-02-10 09:35 | 2022-02-10 11:35 | 13 | 0d | Andrea; Dennis; Gioele | 6h |
| 16 | 1.5.2 | Creazione database |  | 0.5h | 2022-02-10 11:35 | 2022-02-10 12:05 | 15 | 0d | Andrea; Dennis; Gioele | 1.5h |
| 17 | 1.5.3 | **Applicativo web** |  | 7.62d | 2022-02-10 12:05 | 2022-04-28 15:30 |  | 0d |  | 159h |
| 18 | 1.5.3.1 | Pagina login |  | 2h | 2022-02-10 12:05 | 2022-02-10 15:00 | 16 | 7d | Andrea; Gioele | 4h |
| 19 | 1.5.3.2 | Pagine gestione datori |  | 8h | 2022-02-10 12:05 | 2022-02-17 14:30 | 16 | 0d | Dennis | 8h |
| 20 | 1.5.3.3 | Pagine gestione negozi |  | 8h | 2022-02-17 14:30 | 2022-02-24 16:00 | 19 | 0d | Dennis; Andrea; Gioele | 24h |
| 21 | 1.5.3.4 | Pagine gestione dipendenti |  | 8h | 2022-02-24 16:00 | 2022-03-17 10:05 | 20 | 0d | Andrea; Gioele | 16h |
| 22 | 1.5.3.5 | Pagina gestione orario negozio |  | 15h | 2022-03-17 10:05 | 2022-03-31 12:05 | 21 | 0d | Dennis; Andrea; Gioele | 45h |
| 23 | 1.5.3.6 | Panoramica dipendenti |  | 12h | 2022-03-31 12:05 | 2022-04-14 11:05 | 22 | 0.25d | Dennis; Andrea | 24h |
| 24 | 1.5.3.7 | Home |  | 8h | 2022-03-31 12:05 | 2022-04-07 14:30 | 22 | 0d | Gioele | 8h |
| 25 | 1.5.3.8 | Invio email |  | 6h | 2022-04-07 14:30 | 2022-04-14 14:00 | 24 | 0d | Gioele | 6h |
| 26 | 1.5.3.9 | Pagina statistiche |  | 8h | 2022-04-14 14:00 | 2022-04-28 15:30 | 25, 23 | 0d | Andrea; Dennis; Gioele | 24h |

| ID | WBS | Task | Type | Duration | Start | Finish | Predecessors | Total slack | Free slack | Constraint | Calendar | Resources | Work |
| --- | --- | --- | --- | --- | --- | --- | --- | --- | --- | --- | --- | --- | --- |
| 27 | 1.6 | **Test** |  | 0.5d | 2022-04-28 15:30 | 2022-05-05 12:05 |  | 0d |  |  |  |  | 9h |
| 28 | 1.6.1 | Controllo gestione negozi |  | 2h | 2022-04-28 15:30 | 2022-05-05 10:05 | 14 | 0d |  |  |  | Andrea | 2h |
| 29 | 1.6.2 | Controllo utenti |  | 1h | 2022-04-28 15:30 | 2022-04-28 16:30 | 14 | 0.12d |  |  |  | Dennis | 1h |
| 30 | 1.6.3 | Controllo gestione dipendenti |  | 2h | 2022-04-28 15:30 | 2022-05-05 10:05 | 14 | 0d |  |  |  | Gioele | 2h |
| 31 | 1.6.4 | Controllo gestione orari |  | 1h | 2022-05-05 10:05 | 2022-05-05 11:05 | 28, 29, 30 | 0.12d |  |  |  | Andrea | 1h |
| 32 | 1.6.5 | Controllo statistiche |  | 2h | 2022-05-05 10:05 | 2022-05-05 12:05 | 28, 29, 30 | 0d |  |  |  | Dennis | 2h |
| 33 | 1.6.6 | Controllo invio email |  | 1h | 2022-05-05 10:05 | 2022-05-05 11:05 | 28, 29, 30 | 0.12d |  |  |  | Gioele | 1h |
| 34 | 1.7 | Documentazione |  | 23.4h | 2022-02-10 09:41 | 2022-05-05 09:00 | 35FF | 0.3d |  |  | 30% |  |  |
| 35 | 1.8 | Consegna del progetto | milestone | 0d | 2022-05-05 09:00 | 2022-05-05 09:00 |  | 0.3d | 0d | start no earlier than 2022-05-05 09:00 |  |  |  |
